# 软件开发

Schedule from MS Project, 2004-01-01 to 2004-05-13, costs in ￥.

## Calendars

- 标准: Mon-Fri 08:00-12:00, 13:00-17:00; Sat-Sun off.

## Resources

| Resource |
| --- |
| 管理人员 |
| 项目经理 |
| 分析人员 |
| 开发人员 |
| 测试人员 |
| 培训人员 |
| 技术联络人员 |
| 部署小组 |

## Schedule

| ID | WBS | Task | Type | Duration | Start | Finish | Predecessors | Total slack | Resources | Work | Cost |
| --- | --- | --- | --- | --- | --- | --- | --- | --- | --- | --- | --- |
| 1 | 1 | **项目范围规划** |  | 3.5d | 2004-01-01 | 2004-01-06 |  | 0d |  | 28h | 10,000 |
| 2 | 1.1 | 确定项目范围 |  | 4h | 2004-01-01 | 2004-01-01 |  | 0d | 管理人员 | 4h | 1,000 |
| 3 | 1.2 | 获得项目所需资金 |  | 1d | 2004-01-01 | 2004-01-02 | 2 | 0d | 管理人员 | 8h | 2,500 |
| 4 | 1.3 | 定义预备资源 |  | 1d | 2004-01-02 | 2004-01-05 | 3 | 0d | 项目经理 | 8h | 3,000 |
| 5 | 1.4 | 获得核心资源 |  | 1d | 2004-01-05 | 2004-01-06 | 4 | 0d | 项目经理 | 8h | 3,500 |
| 6 | 1.5 | 项目范围规划完成 | milestone | 0d | 2004-01-06 | 2004-01-06 | 5 | 0d |  |  |  |
| 7 | 2 | **分析/软件需求** |  | 14d | 2004-01-06 | 2004-01-26 |  | 0d |  | 120h | 47,500 |
| 8 | 2.1 | 行为需求分析 |  | 5d | 2004-01-06 | 2004-01-13 | 6 | 0d | 分析人员 | 40h | 3,000 |
| 9 | 2.2 | 起草初步的软件规范 |  | 3d | 2004-01-13 | 2004-01-16 | 8 | 0d | 分析人员 | 24h | 4,000 |
| 10 | 2.3 | 制定初步预算 |  | 2d | 2004-01-16 | 2004-01-20 | 9 | 0d | 项目经理 | 16h | 3,500 |
| 11 | 2.4 | 工作组共同审阅软件规范/预算 |  | 4h | 2004-01-20 | 2004-01-20 | 10 | 0d | 项目经理; 分析人员 | 8h | 6,000 |
| 12 | 2.5 | 根据反馈修改软件规范 |  | 1d | 2004-01-21 | 2004-01-21 | 11 | 0d | 分析人员 | 8h | 6,000 |
| 13 | 2.6 | 确定交付期限 |  | 1d | 2004-01-22 | 2004-01-22 | 12 | 0d | 项目经理 | 8h | 6,000 |
| 14 | 2.7 | 获得开展后续工作的批准(概念、期限和预算) |  | 4h | 2004-01-23 | 2004-01-23 | 13 | 0d | 管理人员; 项目经理 | 8h | 6,000 |
| 15 | 2.8 | 获得所需资源 |  | 1d | 2004-01-23 | 2004-01-26 | 14 | 0d | 项目经理 | 8h | 6,500 |
| 16 | 2.9 | 分析工作完成 | milestone | 0d | 2004-01-26 | 2004-01-26 | 15 | 0d |  |  | 6,500 |
| 17 | 3 | **设计** |  | 14.5d | 2004-01-26 | 2004-02-13 |  | 0d |  | 120h | 47,500 |
| 18 | 3.1 | 审阅初步的软件规范 |  | 2d | 2004-01-26 | 2004-01-28 | 16 | 0d | 分析人员 | 16h | 6,000 |
| 19 | 3.2 | 制定功能规范 |  | 5d | 2004-01-28 | 2004-02-04 | 18 | 0d | 分析人员 | 40h | 6,500 |
| 20 | 3.3 | 根据功能规范开发原型 |  | 4d | 2004-02-04 | 2004-02-10 | 19 | 0d | 分析人员 | 32h | 7,000 |
| 21 | 3.4 | 审阅功能规范 |  | 2d | 2004-02-10 | 2004-02-12 | 20 | 0d | 管理人员 | 16h | 7,000 |
| 22 | 3.5 | 根据反馈修改功能规范 |  | 1d | 2004-02-12 | 2004-02-13 | 21 | 0d | 管理人员 | 8h | 7,000 |
| 23 | 3.6 | 获得开展后续工作的批准 |  | 4h | 2004-02-13 | 2004-02-13 | 22 | 0d | 管理人员; 项目经理 | 8h | 7,000 |
| 24 | 3.7 | 设计工作完成 | milestone | 0d | 2004-02-13 | 2004-02-13 | 23 | 0d |  |  | 7,000 |

| ID | WBS | Task | Type | Duration | Start | Finish | Predecessors | Total slack | Free slack | Resources | Work | Cost |
| --- | --- | --- | --- | --- | --- | --- | --- | --- | --- | --- | --- | --- |
| 25 | 4 | **开发** |  | 21.75d | 2004-02-16 | 2004-03-16 |  | 0d |  |  | 264h | 40,000 |
| 26 | 4.1 | 审阅功能规范 |  | 1d | 2004-02-16 | 2004-02-16 | 24 | 0d |  | 开发人员 | 8h | 8,000 |
| 27 | 4.2 | 确定模块化/分层设计参数 |  | 1d | 2004-02-17 | 2004-02-17 | 26 | 0d |  | 开发人员 | 8h | 8,000 |
| 28 | 4.3 | 分派任务给开发人员 |  | 1d | 2004-02-18 | 2004-02-18 | 27 | 0d |  | 开发人员 | 8h | 8,000 |
| 29 | 4.4 | 编写代码 |  | 15d | 2004-02-19 | 2004-03-10 | 28 | 0d |  | 开发人员 | 120h | 8,000 |
| 30 | 4.5 | 开发人员测试(初步调试) |  | 15d | 2004-02-24 | 2004-03-16 | 29FS-7.5% | 0d |  | 开发人员 | 120h | 8,000 |
| 31 | 4.6 | 开发工作完毕 | milestone | 0d | 2004-03-16 | 2004-03-16 | 30 | 0d |  |  |  |  |
| 32 | 5 | **测试** |  | 48.75d | 2004-02-16 | 2004-04-22 |  | 15d |  |  | 280h | 77,000 |
| 33 | 5.1 | 根据产品规范制定单元测试计划 |  | 4d | 2004-02-16 | 2004-02-19 | 24 | 17.75d |  | 测试人员 | 32h | 7,000 |
| 34 | 5.2 | 根据产品规范制定整体测试计划 |  | 4d | 2004-02-16 | 2004-02-19 | 24 | 59.75d |  | 测试人员 | 32h | 7,000 |
| 35 | 5.3 | **单元测试** |  | 15d | 2004-03-16 | 2004-04-06 |  | 0d |  |  | 120h | 35,000 |
| 36 | 5.3.1 | 审阅模块化代码 |  | 5d | 2004-03-16 | 2004-03-23 | 33, 31 | 0d |  | 测试人员 | 40h | 7,000 |
| 37 | 5.3.2 | 测试组件模块是否符合产品规范 |  | 2d | 2004-03-23 | 2004-03-25 | 31, 36 | 0d |  | 测试人员 | 16h | 7,000 |
| 38 | 5.3.3 | 找出不符合产品规范的异常情况 |  | 3d | 2004-03-25 | 2004-03-30 | 37 | 0d |  | 测试人员 | 24h | 7,000 |
| 39 | 5.3.4 | 修改代码 |  | 3d | 2004-03-30 | 2004-04-02 | 38 | 0d |  | 测试人员 | 24h | 7,000 |
| 40 | 5.3.5 | 重新测试经过修改的代码 |  | 2d | 2004-04-02 | 2004-04-06 | 39 | 0d |  | 测试人员 | 16h | 7,000 |
| 41 | 5.3.6 | 单元测试完成 | milestone | 0d | 2004-04-06 | 2004-04-06 | 40 | 0d |  |  |  |  |
| 42 | 5.4 | **整体测试** |  | 12d | 2004-04-06 | 2004-04-22 |  | 0d |  |  | 96h | 28,000 |
| 43 | 5.4.1 | 测试模块集成情况 |  | 5d | 2004-04-06 | 2004-04-13 | 41 | 0d |  | 测试人员 | 40h | 7,000 |
| 44 | 5.4.2 | 找出不符合规范的异常情况 |  | 2d | 2004-04-13 | 2004-04-15 | 43 | 0d |  | 测试人员 | 16h | 7,000 |
| 45 | 5.4.3 | 修改代码 |  | 3d | 2004-04-15 | 2004-04-20 | 44 | 0d |  | 测试人员 | 24h | 7,000 |
| 46 | 5.4.4 | 重新测试经过修改的代码 |  | 2d | 2004-04-20 | 2004-04-22 | 45 | 0d |  | 测试人员 | 16h | 7,000 |
| 47 | 5.4.5 | 整体测试完成 | milestone | 0d | 2004-04-22 | 2004-04-22 | 46 | 0d |  |  |  |  |
| 48 | 6 | **培训** |  | 45.75d | 2004-02-16 | 2004-04-19 |  | 3d |  |  | 256h | 35,000 |
| 49 | 6.1 | 制定针对最终用户的培训规范 |  | 3d | 2004-02-16 | 2004-02-18 | 24 | 21.75d | 18.75d | 培训人员 | 24h | 5,000 |
| 50 | 6.2 | 制定针对产品技术支持人员的培训规范 |  | 3d | 2004-02-16 | 2004-02-18 | 24 | 21.75d | 18.75d | 培训人员 | 24h | 5,000 |
| 51 | 6.3 | 确定培训方法(基于计算机的培训、教室授课等) |  | 2d | 2004-02-16 | 2004-02-17 | 24 | 22.75d | 19.75d | 培训人员 | 16h | 5,000 |
| 52 | 6.4 | 编写培训材料 |  | 3w | 2004-03-16 | 2004-04-06 | 49, 31, 50, 51 | 3d | 0d | 培训人员 | 120h | 5,000 |
| 53 | 6.5 | 研究培训材料的可用性 |  | 4d | 2004-04-06 | 2004-04-12 | 52 | 3d | 0d | 培训人员 | 32h | 5,000 |
| 54 | 6.6 | 对培训材料进行最后处理 |  | 3d | 2004-04-12 | 2004-04-15 | 53 | 3d | 0d | 培训人员 | 24h | 5,000 |
| 55 | 6.7 | 制定培训机制 |  | 2d | 2004-04-15 | 2004-04-19 | 54 | 3d | 0d | 培训人员 | 16h | 5,000 |
| 56 | 6.8 | 培训材料完成 | milestone | 0d | 2004-04-19 | 2004-04-19 | 55 | 3d |  |  |  |  |

| ID | WBS | Task | Type | Duration | Start | Finish | Predecessors | Total slack | Free slack | Resources | Work | Cost |
| --- | --- | --- | --- | --- | --- | --- | --- | --- | --- | --- | --- | --- |
| 57 | 7 | **文档** |  | 30.5d | 2004-02-16 | 2004-03-29 |  | 18.25d |  |  | 336h | 48,000 |
| 58 | 7.1 | 制定“帮助”规范 |  | 1d | 2004-02-16 | 2004-02-16 | 24 | 27.75d | 9.5d | 技术联络人员 | 8h | 6,000 |
| 59 | 7.2 | 开发“帮助”系统 |  | 3w | 2004-03-01 | 2004-03-22 | 58, 29FS-5% | 18.25d | 0d | 技术联络人员 | 120h | 6,000 |
| 60 | 7.3 | 审阅“帮助”文档 |  | 3d | 2004-03-22 | 2004-03-25 | 59 | 18.25d | 0d | 技术联络人员 | 24h | 6,000 |
| 61 | 7.4 | 根据反馈修改“帮助”文档 |  | 2d | 2004-03-25 | 2004-03-29 | 60 | 18.25d | 0d | 技术联络人员 | 16h | 6,000 |
| 62 | 7.5 | 制定用户手册规范 |  | 2d | 2004-02-16 | 2004-02-17 | 24 | 27.75d | 8.5d | 技术联络人员 | 16h | 6,000 |
| 63 | 7.6 | 编写用户手册 |  | 3w | 2004-03-01 | 2004-03-22 | 62, 29FS-5% | 19.25d | 0d | 技术联络人员 | 120h | 6,000 |
| 64 | 7.7 | 审阅所有的用户文档 |  | 2d | 2004-03-22 | 2004-03-24 | 63 | 19.25d | 0d | 技术联络人员 | 16h | 6,000 |
| 65 | 7.8 | 根据反馈修改用户文档 |  | 2d | 2004-03-24 | 2004-03-26 | 64 | 19.25d | 1d | 技术联络人员 | 16h | 6,000 |
| 66 | 7.9 | 文档完成 | milestone | 0d | 2004-03-29 | 2004-03-29 | 65, 61 | 18.25d |  |  |  |  |
| 67 | 8 | **试生产** |  | 70.25d | 2004-01-26 | 2004-05-03 |  | 0d |  |  | 64h | 37,000 |
| 68 | 8.1 | 确定测试群体 |  | 1d | 2004-01-26 | 2004-01-27 | 16 | 61.25d | 0d | 项目经理 | 8h | 8,000 |
| 69 | 8.2 | 确定软件分发机制 |  | 1d | 2004-01-27 | 2004-01-28 | 68 | 61.25d |  |  |  | 8,000 |
| 70 | 8.3 | 安装/部署软件 |  | 1d | 2004-04-22 | 2004-04-23 | 47, 69, 66, 56 | 0d |  | 部署小组 | 8h | 7,000 |
| 71 | 8.4 | 获得用户反馈 |  | 1w | 2004-04-23 | 2004-04-30 | 70 | 0d |  | 部署小组 | 40h | 7,000 |
| 72 | 8.5 | 评估测试信息 |  | 1d | 2004-04-30 | 2004-05-03 | 71 | 0d |  | 部署小组 | 8h | 7,000 |
| 73 | 8.6 | 试生产工作完成 | milestone | 0d | 2004-05-03 | 2004-05-03 | 72 | 0d |  |  |  |  |
| 74 | 9 | **部署** |  | 5d | 2004-05-03 | 2004-05-10 |  | 0d |  |  | 40h | 35,000 |
| 75 | 9.1 | 确定最终部署策略 |  | 1d | 2004-05-03 | 2004-05-04 | 73 | 0d |  | 部署小组 | 8h | 7,000 |
| 76 | 9.2 | 确定部署方法 |  | 1d | 2004-05-04 | 2004-05-05 | 75 | 0d |  | 部署小组 | 8h | 7,000 |
| 77 | 9.3 | 获得部署所需资源 |  | 1d | 2004-05-05 | 2004-05-06 | 76 | 0d |  | 部署小组 | 8h | 7,000 |
| 78 | 9.4 | 培训技术支持人员 |  | 1d | 2004-05-06 | 2004-05-07 | 77 | 0d |  | 部署小组 | 8h | 7,000 |
| 79 | 9.5 | 部署软件 |  | 1d | 2004-05-07 | 2004-05-10 | 78 | 0d |  | 部署小组 | 8h | 7,000 |
| 80 | 9.6 | 部署工作完成 | milestone | 0d | 2004-05-10 | 2004-05-10 | 79 | 0d |  |  |  |  |

| ID | WBS | Task | Type | Duration | Start | Finish | Predecessors | Total slack | Resources | Work | Cost |
| --- | --- | --- | --- | --- | --- | --- | --- | --- | --- | --- | --- |
| 81 | 10 | **实施工作结束后的回顾** |  | 3d | 2004-05-10 | 2004-05-13 |  | 0d |  | 24h | 24,000 |
| 82 | 10.1 | 将经验教训记录存档 |  | 1d | 2004-05-10 | 2004-05-11 | 80 | 0d | 项目经理 | 8h | 8,000 |
| 83 | 10.2 | 分发给工作组成员 |  | 1d | 2004-05-11 | 2004-05-12 | 82 | 0d | 项目经理 | 8h | 8,000 |
| 84 | 10.3 | 建立软件维护小组 |  | 1d | 2004-05-12 | 2004-05-13 | 83 | 0d | 项目经理 | 8h | 8,000 |
| 85 | 10.4 | 回顾完成 | milestone | 0d | 2004-05-13 | 2004-05-13 | 84 | 0d |  |  |  |
| 86 | 11 | 软件开发模板结束 | milestone | 0d | 2004-05-13 | 2004-05-13 | 85 | 0d |  |  |  |
